How a schedule from MS Project changed from version to version. A marks actual dates.

## Version 1 (saved 2019-09-11)

Note of the change: 提交文档到github

| ID | WBS | Task | Duration | Start | Finish | Predecessors | Total float | Constraint |
| --- | --- | --- | --- | --- | --- | --- | --- | --- |
| 1 |  | 技术选型 | 3d | 2019-09-10 | 2019-09-13 |  | 7d | start no earlier than 2019-09-10 |
| 2 |  | 框架搭建 | 5d | 2019-09-13 | 2019-09-20 | 1 | 39d |  |
| 3 |  | 技术预研 | 5d | 2019-09-13 | 2019-09-20 | 1 | 7d |  |
| 4 | 4 | **编码阶段** | 32d | 2019-09-20 | 2019-11-05 |  | 0d |  |
| 5 | 4.1 | **相机拍摄** | 29d | 2019-09-20 | 2019-10-31 |  | 3d |  |
| 6 | 4.1.1 | **自定义相机** | 14d | 2019-09-20 | 2019-10-10 |  | 15d |  |
| 7 |  | 相机界面布局 | 2d | 2019-09-20 | 2019-09-24 | 3 | 25d |  |
| 8 |  | 相机拍摄预览 | 3d | 2019-09-24 | 2019-09-27 | 7 | 25d |  |
| 9 |  | 相机图片数据获取 | 2d | 2019-09-27 | 2019-10-01 | 8 | 25d |  |
| 10 |  | 相机图片保存 | 2d | 2019-10-08 | 2019-10-10 |  | 3d | start no earlier than 2019-10-08 |
| 11 | 4.1.2 | **滤镜** | 25d | 2019-09-20 | 2019-10-25 |  | 7d |  |
| 12 | 4.1.2.1 | **基础滤镜** | 16d | 2019-09-20 | 2019-10-14 |  | 7d |  |
| 13 |  | 基础滤镜模块设计与实现 | 4d | 2019-09-20 | 2019-09-26 | 3 | 7d |  |
| 14 |  | 实现基础滤镜（可以先实现部分，供其他模块调用） | 9d | 2019-09-26 | 2019-10-09 | 13 | 7d |  |
| 15 |  | 与其他模块使用联调 | 3d | 2019-10-09 | 2019-10-14 | 14 | 7d |  |
| 16 | 4.1.2.2 | **美颜** | 9d | 2019-10-14 | 2019-10-25 |  | 7d |  |
| 17 |  | 美颜模块设计与实现 | 4d | 2019-10-14 | 2019-10-18 | 15 | 7d |  |
| 18 |  | 实现美颜效果（等级1-7级） | 3d | 2019-10-18 | 2019-10-23 | 17 | 7d |  |
| 19 |  | 美颜功能bug修改 | 2d | 2019-10-23 | 2019-10-25 | 18 | 7d |  |
| 20 | 4.1.3 | **拍照图片设置** | 6d | 2019-10-10 | 2019-10-18 |  | 3d |  |
| 21 | 4.1.3.1 | **照片画幅设置** | 3d | 2019-10-10 | 2019-10-15 |  | 3d |  |
| 22 |  | 推荐画幅 | 1d | 2019-10-10 | 2019-10-11 | 10 | 3d |  |
| 23 |  | 自定义画幅 | 2d | 2019-10-11 | 2019-10-15 | 22 | 3d |  |
| 24 | 4.1.3.2 | **灰度设置** | 3d | 2019-10-15 | 2019-10-18 |  | 3d |  |
| 25 |  | 推荐灰度 | 1d | 2019-10-15 | 2019-10-16 | 23 | 3d |  |
| 26 |  | 自定义灰度 | 2d | 2019-10-16 | 2019-10-18 | 25 | 3d |  |
| 27 | 4.1.4 | **萌拍** | 9d | 2019-10-18 | 2019-10-31 |  | 3d |  |
| 28 |  | 人脸识别模块设计和实现 | 5d | 2019-10-18 | 2019-10-25 | 26 | 3d |  |
| 29 |  | 结合模板进行萌拍 | 4d | 2019-10-25 | 2019-10-31 | 28 | 3d |  |
| 30 | 4.2 | **相册图片编辑** | 24d | 2019-09-20 | 2019-10-24 |  | 8d |  |
| 31 | 4.2.1 | **裁剪** | 19d | 2019-09-20 | 2019-10-17 |  | 13d |  |
| 32 |  | 裁剪模块设计与实现 | 3d | 2019-09-20 | 2019-09-25 | 3 | 26d |  |
| 33 |  | 界面布局和逻辑 | 2d | 2019-09-25 | 2019-09-27 | 32 | 26d |  |
| 34 |  | 自由裁剪 | 1d | 2019-09-27 | 2019-09-30 | 33 | 26d |  |
| 35 |  | 全屏裁剪 | 1d | 2019-10-09 | 2019-10-10 |  | 8d | start no earlier than 2019-10-09 |
| 36 |  | 推荐比例裁剪（1:1 3:4 4:3 16:9 9:16） | 5d | 2019-10-10 | 2019-10-17 | 35 | 8d |  |
| 37 | 4.2.2 | **基础滤镜** | 5d | 2019-10-17 | 2019-10-24 |  | 8d |  |
| 38 |  | 界面布局 | 2d | 2019-10-17 | 2019-10-21 | 36 | 8d |  |
| 39 |  | 使用基础滤镜模块接口完成逻辑 | 3d | 2019-10-21 | 2019-10-24 | 38 | 8d |  |
| 40 | 4.2.3 | **贴纸** | 20d | 2019-09-20 | 2019-10-18 |  | 12d |  |
| 41 |  | 贴纸模块设计与实现 | 3d | 2019-09-20 | 2019-09-25 | 3 | 25d |  |
| 42 |  | 贴纸库--做好设计和实现 | 2d | 2019-09-25 | 2019-09-27 | 41 | 25d |  |
| 43 |  | 自定义贴纸 | 2d | 2019-09-27 | 2019-10-01 | 42 | 25d | start no earlier than 2019-09-27 |
| 44 |  | 贴纸透明度 | 2d | 2019-10-08 | 2019-10-10 |  | 10d | start no earlier than 2019-10-08 |
| 45 | 4.2.3.5 | **橡皮擦** | 6d | 2019-10-10 | 2019-10-18 |  | 10d |  |
| 46 |  | 橡皮擦模块设计与实现 | 2d | 2019-10-10 | 2019-10-14 | 44 | 10d |  |
| 47 |  | 尺寸调节 | 1d | 2019-10-14 | 2019-10-15 | 46 | 10d |  |
| 48 |  | 硬度调节 | 1d | 2019-10-15 | 2019-10-16 | 47 | 10d |  |
| 49 |  | 擦除 | 1d | 2019-10-16 | 2019-10-17 | 48 | 10d |  |
| 50 |  | 恢复 | 1d | 2019-10-17 | 2019-10-18 | 49 | 10d |  |
| 51 | 4.2.4 | **灰度** | 2d | 2019-10-18 | 2019-10-22 |  | 10d |  |
| 52 |  | 界面布局 | 1d | 2019-10-18 | 2019-10-21 | 50 | 10d |  |
| 53 |  | 使用灰度模块完成逻辑 | 1d | 2019-10-21 | 2019-10-22 | 52 | 10d |  |
| 54 | 4.2.5 | **文字** | 17d | 2019-09-20 | 2019-10-15 |  | 15d |  |
| 55 |  | 文字模块设计与实现 | 3d | 2019-09-20 | 2019-09-25 | 3 | 26d |  |
| 56 |  | 自定义水印 | 2d | 2019-09-25 | 2019-09-27 | 55 | 26d |  |
| 57 |  | 文字大小设置 | 1d | 2019-09-27 | 2019-09-30 | 56 | 26d |  |
| 58 |  | 文字字体 | 4d | 2019-10-09 | 2019-10-15 |  | 7d | start no earlier than 2019-10-09 |
| 59 | 4.3 | **历史图片美化** | 32d | 2019-09-20 | 2019-11-05 |  | 0d |  |
| 60 | 4.3.1 | **智能优化** | 21d | 2019-09-20 | 2019-10-21 |  | 11d |  |
| 61 |  | 智能优化模块设计与实现 | 4d | 2019-09-20 | 2019-09-26 | 3 | 26d |  |
| 62 |  | 实现各种优化效果（前两种） | 2d | 2019-09-26 | 2019-09-30 | 61 | 26d |  |
| 63 |  | 实现各种优化效果（后面所有的） | 5d | 2019-10-08 | 2019-10-15 |  | 6d | start no earlier than 2019-10-08 |
| 64 |  | 做好智能优化扩展接口 | 4d | 2019-10-15 | 2019-10-21 | 63 | 6d |  |
| 65 | 4.3.2 | **编辑** | 8d | 2019-10-24 | 2019-11-05 |  | 0d |  |
| 66 | 4.3.2.1 | **裁剪** | 3d | 2019-10-24 | 2019-10-29 |  | 0d |  |
| 67 |  | 界面布局 | 2d | 2019-10-24 | 2019-10-28 | 118 | 0d |  |
| 68 |  | 结合裁剪模块接口完成逻辑 | 1d | 2019-10-28 | 2019-10-29 | 67 | 0d |  |
| 69 | 4.3.2.2 | **旋转** | 5d | 2019-10-29 | 2019-11-05 |  | 0d |  |
| 70 |  | 旋转模块设计与实现 | 2d | 2019-10-29 | 2019-10-31 | 68 | 0d |  |

| ID | WBS | Task | Duration | Start | Finish | Predecessors | Total float | Constraint |
| --- | --- | --- | --- | --- | --- | --- | --- | --- |
| 71 |  | 推荐角度旋转 | 1d | 2019-10-31 | 2019-11-01 | 70 | 0d |  |
| 72 |  | 自由旋转 | 2d | 2019-11-01 | 2019-11-05 | 71 | 0d |  |
| 73 | 4.3.3 | **增强** | 24d | 2019-09-20 | 2019-10-24 |  | 8d |  |
| 74 | 4.3.3.1 | **光效** | 17d | 2019-09-20 | 2019-10-15 |  | 15d |  |
| 75 |  | 光效模块设计与实现 | 3d | 2019-09-20 | 2019-09-25 | 3 | 26d |  |
| 76 |  | 实现各种光效调整功能（智能补光、亮度、对比度） | 3d | 2019-09-25 | 2019-09-30 | 75 | 26d |  |
| 77 |  | 实现各种光效调整功能（高光调节、暗部改善、褪色） | 3d | 2019-10-08 | 2019-10-11 |  | 3d | start no earlier than 2019-10-08 |
| 78 |  | 提供光效扩展接口 | 2d | 2019-10-11 | 2019-10-15 | 77 | 3d |  |
| 79 | 4.3.3.2 | **色彩** | 7d | 2019-10-15 | 2019-10-24 |  | 3d |  |
| 80 |  | 色彩模块设计与实现 | 3d | 2019-10-15 | 2019-10-18 | 78 | 3d |  |
| 81 |  | 实现各种色彩调整功能（饱和度、色温、色调、色调分离） | 4d | 2019-10-18 | 2019-10-24 | 80 | 3d |  |
| 82 | 4.3.4 | **基础滤镜** | 5d | 2019-10-21 | 2019-10-28 |  | 6d |  |
| 83 |  | 界面布局 | 3d | 2019-10-21 | 2019-10-24 | 64 | 6d |  |
| 84 |  | 结合基础滤镜模块的接口完成逻辑 | 2d | 2019-10-24 | 2019-10-28 | 83 | 6d |  |
| 85 | 4.3.5 | **边框** | 7d | 2019-09-20 | 2019-10-01 |  | 25d |  |
| 86 |  | 边框模块设计与实现 | 3d | 2019-09-20 | 2019-09-25 | 3 | 25d |  |
| 87 |  | 自定义边框实现（包括形状、宽度、颜色和大小） | 2d | 2019-09-25 | 2019-09-27 | 86 | 25d |  |
| 88 |  | 提供边框扩展接口 | 2d | 2019-09-27 | 2019-10-01 | 87 | 25d |  |
| 89 | 4.3.6 | **涂鸦笔** | 24d | 2019-09-20 | 2019-10-24 |  | 8d |  |
| 90 | 4.3.6.1 | **涂鸦笔** | 17d | 2019-09-20 | 2019-10-15 |  | 15d |  |
| 91 |  | 涂鸦笔模块设计与实现 | 3d | 2019-09-20 | 2019-09-25 | 3 | 26d |  |
| 92 |  | 自由涂鸦 | 3d | 2019-09-25 | 2019-09-30 | 91 | 26d |  |
| 93 |  | 涂鸦库（完成直线、虚线、圆、三角形、path的选择和设置） | 5d | 2019-10-08 | 2019-10-15 |  | 8d | start no earlier than 2019-10-08 |
| 94 | 4.3.6.2 | **橡皮擦** | 4d | 2019-10-15 | 2019-10-21 |  | 8d |  |
| 95 |  | 界面布局 | 2d | 2019-10-15 | 2019-10-17 | 93 | 8d |  |
| 96 |  | 使用橡皮擦模块接口实现逻辑 | 2d | 2019-10-17 | 2019-10-21 | 95 | 8d |  |
| 97 |  | 涂鸦笔与其他使用模块联调 | 3d | 2019-10-21 | 2019-10-24 | 96 | 8d |  |
| 98 | 4.3.7 | **贴纸** | 5d | 2019-10-24 | 2019-10-31 |  | 3d |  |
| 99 |  | 界面布局 | 2d | 2019-10-24 | 2019-10-28 | 81 | 3d |  |
| 100 |  | 使用贴纸模块接口实现逻辑 | 3d | 2019-10-28 | 2019-10-31 | 99 | 3d |  |
| 101 | 4.3.8 | **文字** | 6d | 2019-10-09 | 2019-10-17 |  | 13d |  |
| 102 |  | 界面布局 | 2d | 2019-10-09 | 2019-10-11 |  | 13d | start no earlier than 2019-10-09 |
| 103 |  | 使用贴纸模块接口实现逻辑 | 4d | 2019-10-11 | 2019-10-17 | 102 | 13d |  |
| 104 | 4.4 | **拼图** | 25d | 2019-09-20 | 2019-10-25 |  | 7d |  |
| 105 | 4.4.1 | **平铺（模板）** | 18d | 2019-09-20 | 2019-10-16 |  | 14d |  |
| 106 |  | 平铺拼图模块设计与实现 | 3d | 2019-09-20 | 2019-09-25 | 3 | 26d |  |
| 107 |  | 各种平铺效果实现（根据模板，选择图片数量2、3、4张） | 3d | 2019-09-25 | 2019-09-30 | 106 | 26d |  |
| 108 |  | 各种平铺效果实现（根据模板，选择图片数量5、6、7、8、9张） | 5d | 2019-10-08 | 2019-10-15 |  | 7d | start no earlier than 2019-10-08 |
| 109 |  | 提供外部扩展接口 | 1d | 2019-10-15 | 2019-10-16 | 108 | 7d |  |
| 110 | 4.4.2 | **拼接（模板）** | 7d | 2019-10-16 | 2019-10-25 |  | 7d |  |
| 111 |  | 拼接拼图模块设计与实现 | 2d | 2019-10-16 | 2019-10-18 | 109 | 7d |  |
| 112 |  | 各种拼接效果实现（根据模板） | 3d | 2019-10-18 | 2019-10-23 | 111 | 7d |  |
| 113 |  | 提供外部扩展接口 | 2d | 2019-10-23 | 2019-10-25 | 112 | 7d |  |
| 114 | 4.4.3 | **自由拼图（叠加）** | 24d | 2019-09-20 | 2019-10-24 |  | 8d |  |
| 115 |  | 自由拼图模块设计与实现 | 3d | 2019-09-20 | 2019-09-25 | 3 | 25d |  |
| 116 |  | 实现自由拼图（叠加）的图片层设计 | 4d | 2019-09-25 | 2019-10-01 | 115 | 25d |  |
| 117 |  | 实现自由叠加拼接功能 | 8d | 2019-10-09 | 2019-10-21 |  | 0d | start no earlier than 2019-10-09 |
| 118 |  | 提供外部扩展接口 | 3d | 2019-10-21 | 2019-10-24 | 117 | 0d |  |
| 119 | 4.5 | **图片保存和分享** | 8d | 2019-10-15 | 2019-10-25 |  | 7d |  |
| 120 | 4.5.1 | **图片保存** | 5d | 2019-10-15 | 2019-10-22 |  | 7d |  |
| 121 |  | 图片保存至系统相册 | 3d | 2019-10-15 | 2019-10-18 | 58 | 7d |  |
| 122 |  | 将保存的图片信息记录到本地数据库，作为历史图片的依据 | 2d | 2019-10-18 | 2019-10-22 | 121 | 7d |  |
| 123 | 4.5.2 | **图片分享到第三方** | 3d | 2019-10-22 | 2019-10-25 |  | 7d |  |
| 124 |  | 使用一键分享到第三方app | 3d | 2019-10-22 | 2019-10-25 | 122 | 7d |  |
| 125 |  | 调试测试阶段 | 7d | 2019-11-05 | 2019-11-14 | 4 | 0d | finish no earlier than 2019-11-08 |

## Version 2 (saved 2019-09-16)

Note of the change: 提交更新的资料

Last finish stays 2019-11-14.

Changed:

| ID | Task | Other |
| --- | --- | --- |
| 1 | 技术选型 | resources 白旦旦 → 刘卫平; 朱亚安 |
| 2 | 框架搭建 | resources 白旦旦 → 白旦旦; 刘卫平 |
| 4 | **编码阶段** | resources none → 白旦旦; 呼伟; 蒋海田; 李彬; 刘卫平; 宁飞飞; 庞化; 田坤; 王宏; 王玮; 蔚鹏; 于凯; 朱亚安 |
| 101 | **文字** | resources none → 呼伟 |
| 104 | **拼图** | resources none → 蒋海田; 于凯 |

## Version 3 (saved 2019-09-23)

Note of the change: 更新开发进度

Last finish stays 2019-11-14. Complete tasks 0 → 2.

Changed:

| ID | Task | Start | Finish | Complete | Total float |
| --- | --- | --- | --- | --- | --- |
| 1 | 技术选型 | 2019-09-10 A | 2019-09-13 A | 0% → 100% | 7d → none |
| 2 | 框架搭建 | 2019-09-13 A | 2019-09-20 A | 0% → 100% | 39d → none |
| 3 | 技术预研 | 2019-09-13 A |  | 0% → 85% |  |
